# Cronograma de Actividades SAJU

Schedule from MS Project, 2017-03-09 to 2018-01-01, A marks actual dates.
S.A.T.

## Calendars

- Estándar: Mon-Fri 09:00-13:00, 14:00-18:00; Sat-Sun off. Exceptions (off unless hours are given): 2017-04-13 to 2017-04-14 (semana santa), 2017-05-01 (dia del trabajo), 2017-06-29 (feriado), 2017-07-28 (fiestas patrias), 2017-08-30 (santa rosa), 2017-11-01 (feriado), 2017-12-08 (feriado), 2017-12-25 (navidad).

## Resources

| Resource |
| --- |
| Marjorie Gil |
| Wilson R |
| América B |
| Luis Leiva |
| Fernando B |
| César A |
| AF Calidad |
| Usuario |
| Edgar Marquez |
| Modelador de Datos |
| Ronald Raico |
| Celis |
| Proveedor |
| logistica |

## Schedule

| ID | WBS | Task | Duration | Start | Finish | Predecessors | Complete | Remaining | Baseline start | Baseline finish | Baseline duration | Total slack | Constraint | Work | Actual work |
| --- | --- | --- | --- | --- | --- | --- | --- | --- | --- | --- | --- | --- | --- | --- | --- |
| 1 | 1 | **Ejecución de la AE Digitalización de Expedientes Coactivos** | 204d | 2017-03-09 A | 2018-01-01 |  | 64% | 72.52d | 2017-03-09 | 2018-01-01 | 204d | 0d |  | 3008.4h | 1882.32h |
| 2 | 1.1 | **1. ACTIVIDADES DE GESTIÓN** | 204d | 2017-03-09 A | 2018-01-01 |  | 43% | 116.24d | 2017-03-09 | 2018-01-01 | 204d | 0d |  |  |  |
| 3 | 1.1.1 | **1.1 Planificación** | 12d | 2017-05-22 A | 2017-06-06 A |  | 100% |  | 2017-05-22 | 2017-06-06 | 12d |  |  |  |  |
| 4 | 1.1.1.1 | **1.1.1 Gestión del Alcance** | 12d | 2017-05-22 A | 2017-06-06 A |  | 100% |  | 2017-05-22 | 2017-06-06 | 12d |  |  |  |  |
| 5 | 1.1.1.1.1 | Elaboración del documento | 3d | 2017-05-22 A | 2017-05-24 A |  | 100% |  | 2017-05-22 | 2017-05-24 | 3d |  | start no earlier than 2017-05-22 |  |  |
| 6 | 1.1.1.1.2 | Revisión del documento | 1d | 2017-05-25 A | 2017-05-25 A | 5 | 100% |  | 2017-05-25 | 2017-05-25 | 1d |  | start no earlier than 2017-05-25 |  |  |
| 7 | 1.1.1.1.3 | Levantamiento de observaciones | 1d | 2017-05-26 A | 2017-05-26 A | 6 | 100% |  | 2017-05-26 | 2017-05-26 | 1d |  | start no earlier than 2017-05-26 |  |  |
| 8 | 1.1.1.1.4 | Validación Final | 5d | 2017-05-29 A | 2017-06-02 A | 7 | 100% |  | 2017-05-29 | 2017-06-02 | 5d |  | start no earlier than 2017-05-29 |  |  |
| 9 | 1.1.1.1.5 | Aprobación del documento | 2d | 2017-06-05 A | 2017-06-06 A | 8 | 100% |  | 2017-06-05 | 2017-06-06 | 2d |  | finish no earlier than 2017-06-06 |  |  |
| 10 | 1.1.2 | **1.2 Ejecución** | 203d | 2017-03-09 A | 2017-12-29 |  | 41% | 120.46d | 2017-03-09 | 2017-12-29 | 203d | 1d |  |  |  |
| 11 | 1.1.2.1 | **1.2.1 Gestión de las adquisiciones** | 203d | 2017-03-09 A | 2017-12-29 |  | 41% | 120.46d | 2017-03-09 | 2017-12-29 | 203d | 1d |  |  |  |
| 12 | 1.1.2.1.1 | **1.2.1.1 Servicio de Terceros** | 203d | 2017-03-09 A | 2017-12-29 |  | 41% | 120.46d | 2017-03-09 | 2017-12-29 | 203d | 1d |  |  |  |
| 13 | 1.1.2.1.1.1 | **1.2.1.1.1 Contratación** | 168d | 2017-03-09 A | 2017-11-08 |  | 24% | 128.19d | 2017-03-09 | 2017-11-08 | 168d | 36d |  |  |  |
| 14 | 1.1.2.1.1.1.1 | **Persona Natural** | 168d | 2017-03-09 A | 2017-11-08 |  | 77% | 38.77d | 2017-03-09 | 2017-11-08 | 168d | 36d |  |  |  |
| 15 | 1.1.2.1.1.1.1.1 | Luis Leiva (Procesos) | 1d | 2017-03-09 A | 2017-03-09 A |  | 100% |  | 2017-03-09 | 2017-03-09 | 1d |  |  |  |  |
| 16 | 1.1.2.1.1.1.1.2 | Luis Leiva (Sistemas) | 1d | 2017-05-08 A | 2017-05-08 A |  | 100% |  | 2017-05-08 | 2017-05-08 | 1d |  | start no earlier than 2017-05-08 |  |  |
| 17 | 1.1.2.1.1.1.1.3 | Luis Leiva (Sistemas) | 1d | 2017-08-08 A | 2017-08-08 A |  | 100% |  | 2017-08-08 | 2017-08-08 | 1d |  | start no earlier than 2017-08-08 |  |  |
| 18 | 1.1.2.1.1.1.1.4 | Luis Leiva (Sistemas) | 1d | 2017-09-08 A | 2017-09-08 A |  | 100% |  | 2017-09-08 | 2017-09-08 | 1d |  | start no earlier than 2017-09-08 |  |  |
| 19 | 1.1.2.1.1.1.1.5 | Luis Leiva (Sistemas) | 1d | 2017-11-08 | 2017-11-08 |  |  |  | 2017-11-08 | 2017-11-08 | 1d | 36d | start no earlier than 2017-11-08 |  |  |
| 20 | 1.1.2.1.1.1.1.6 | Fernando Bustamante (Programador) | 1d | 2017-06-01 A | 2017-06-01 A |  | 100% |  | 2017-06-01 | 2017-06-01 | 1d |  | start no earlier than 2017-06-01 |  |  |
| 21 | 1.1.2.1.1.1.1.7 | Fernando Bustamante (Programador) | 1d | 2017-06-30 A | 2017-06-30 A |  | 100% |  | 2017-06-30 | 2017-06-30 | 1d |  | start no earlier than 2017-06-30 |  |  |
| 22 | 1.1.2.1.1.1.1.8 | Fernando Bustamante (Programador) | 1d | 2017-08-29 A | 2017-08-29 A |  | 100% |  | 2017-08-29 | 2017-08-29 | 1d |  | start no earlier than 2017-08-29 |  |  |
| 23 | 1.1.2.1.1.1.1.9 | Fernando Bustamante (Programador) | 1d | 2017-10-25 | 2017-10-25 |  |  |  | 2017-10-25 | 2017-10-25 | 1d | 45d | start no earlier than 2017-10-25 |  |  |
| 24 | 1.1.2.1.1.1.1.10 | César Atalaya (Programador) | 1d | 2017-06-01 A | 2017-06-01 A |  | 100% |  | 2017-06-01 | 2017-06-01 | 1d |  | start no earlier than 2017-06-01 |  |  |
| 25 | 1.1.2.1.1.1.1.11 | César Atalaya (Programador) | 1d | 2017-06-30 A | 2017-06-30 A |  | 100% |  | 2017-06-30 | 2017-06-30 | 1d |  | start no earlier than 2017-06-30 |  |  |
| 26 | 1.1.2.1.1.1.1.12 | César Atalaya (Programador) | 1d | 2017-08-29 A | 2017-08-29 A |  | 100% |  | 2017-08-29 | 2017-08-29 | 1d |  | start no earlier than 2017-08-29 |  |  |
| 27 | 1.1.2.1.1.1.1.13 | César Atalaya (Programador) | 1d | 2017-10-25 | 2017-10-25 |  |  |  | 2017-10-25 | 2017-10-25 | 1d | 45d | start no earlier than 2017-10-25 |  |  |

| ID | WBS | Task | Duration | Start | Finish | Predecessors | Complete | Remaining | Baseline start | Baseline finish | Baseline duration | Total slack | Free slack | Constraint |
| --- | --- | --- | --- | --- | --- | --- | --- | --- | --- | --- | --- | --- | --- | --- |
| 28 | 1.1.2.1.1.1.2 | **Persona Jurídica** | 27d | 2017-09-19 A | 2017-10-25 |  | 3% | 26.26d | 2017-09-19 | 2017-10-25 | 27d | 45d |  |  |
| 29 | 1.1.2.1.1.1.2.1 | Elaboración de TDR | 9d | 2017-09-19 A | 2017-09-29 |  | 10% | 8.1d | 2017-09-19 | 2017-09-29 | 9d | 51d | 0d | start no earlier than 2017-09-19 |
| 30 | 1.1.2.1.1.1.2.2 | Elaboración y Firma de Bases | 2d | 2017-10-02 | 2017-10-03 | 29 |  |  | 2017-10-02 | 2017-10-03 | 2d | 51d | 0d |  |
| 31 | 1.1.2.1.1.1.2.3 | Publicación de convocatoria | 1d | 2017-10-04 | 2017-10-04 | 30 |  |  | 2017-10-04 | 2017-10-04 | 1d | 51d | 0d |  |
| 32 | 1.1.2.1.1.1.2.4 | Registro de participantes | 9d | 2017-10-05 | 2017-10-17 | 31 |  |  | 2017-10-05 | 2017-10-17 | 9d | 51d |  |  |
| 33 | 1.1.2.1.1.1.2.5 | Consultas y observaciones | 2d | 2017-10-10 | 2017-10-11 |  |  |  | 2017-10-10 | 2017-10-11 | 2d | 48d | 0d | start no earlier than 2017-10-10 |
| 34 | 1.1.2.1.1.1.2.6 | Absolución de consultas y observaciones | 1d | 2017-10-12 | 2017-10-12 | 33 |  |  | 2017-10-12 | 2017-10-12 | 1d | 48d | 0d |  |
| 35 | 1.1.2.1.1.1.2.7 | Integración de Bases | 1d | 2017-10-13 | 2017-10-13 | 34 |  |  | 2017-10-13 | 2017-10-13 | 1d | 48d | 0d |  |
| 36 | 1.1.2.1.1.1.2.8 | Presentación de ofertas | 1d | 2017-10-16 | 2017-10-16 | 35 |  |  | 2017-10-16 | 2017-10-16 | 1d | 48d | 0d |  |
| 37 | 1.1.2.1.1.1.2.9 | Evaluación y calificación | 1d | 2017-10-17 | 2017-10-17 | 36 |  |  | 2017-10-17 | 2017-10-17 | 1d | 48d | 0d |  |
| 38 | 1.1.2.1.1.1.2.10 | Otorgamiento de la nueva Pro | 1d | 2017-10-18 | 2017-10-18 | 37 |  |  | 2017-10-18 | 2017-10-18 | 1d | 48d | 0d |  |
| 39 | 1.1.2.1.1.1.2.11 | Firma de Contrato | 5d | 2017-10-19 | 2017-10-25 | 38 |  |  | 2017-10-19 | 2017-10-25 | 5d | 48d |  |  |
| 40 | 1.1.2.1.1.2 | **1.2.1.1.2 Inducción** | 2d | 2017-03-09 A | 2017-03-10 A |  | 100% |  | 2017-03-09 | 2017-03-10 | 2d |  |  |  |
| 41 | 1.1.2.1.1.2.1 | Presentación de equipos | 1d | 2017-03-09 A | 2017-03-09 A |  | 100% |  | 2017-03-09 | 2017-03-09 | 1d |  |  |  |
| 42 | 1.1.2.1.1.2.2 | Capacitación en Procesos | 1d | 2017-03-10 A | 2017-03-10 A | 41 | 100% |  | 2017-03-10 | 2017-03-10 | 1d |  |  |  |
| 43 | 1.1.2.1.1.2.3 | Capacitación en la nueva arquitectura | 1d | 2017-03-09 A | 2017-03-09 A |  | 100% |  | 2017-03-09 | 2017-03-09 | 1d |  |  |  |
| 44 | 1.1.2.1.1.2.4 | Pasantía con el área usuaria | 2d | 2017-03-09 A | 2017-03-10 A |  | 100% |  | 2017-03-09 | 2017-03-10 | 2d |  |  |  |
| 45 | 1.1.2.1.1.3 | **1.2.1.1.3 Informes** | 203d | 2017-03-09 A | 2017-12-29 |  | 60% | 81.2d | 2017-03-09 | 2017-12-29 | 203d | 1d |  |  |
| 46 | 1.1.2.1.1.3.1 | **A. Persona Natural** | 200d | 2017-03-09 A | 2017-12-26 |  | 65% | 69.57d | 2017-03-09 | 2017-12-26 | 200d | 4d |  |  |
| 47 | 1.1.2.1.1.3.1.1 | Informe de Pago - Luis Leiva (procesos) | 1d | 2017-04-03 A | 2017-04-03 A |  | 100% |  | 2017-04-03 | 2017-04-03 | 1d |  |  | start no earlier than 2017-04-03 |
| 48 | 1.1.2.1.1.3.1.2 | Informe de Pago - Luis Leiva (sistemas) | 1d | 2017-05-02 A | 2017-05-02 A |  | 100% |  | 2017-05-02 | 2017-05-02 | 1d |  |  | start no earlier than 2017-05-02 |
| 49 | 1.1.2.1.1.3.1.3 | Informe de Pago - Luis Leiva (sistemas) | 1d | 2017-06-02 A | 2017-06-02 A |  | 100% |  | 2017-06-02 | 2017-06-02 | 1d |  |  | start no earlier than 2017-06-02 |
| 50 | 1.1.2.1.1.3.1.4 | Informe de Pago - Luis Leiva (sistemas) | 1d | 2017-07-03 A | 2017-07-03 A |  | 100% |  | 2017-07-03 | 2017-07-03 | 1d |  |  | start no earlier than 2017-07-03 |
| 51 | 1.1.2.1.1.3.1.5 | Informe de Pago - Luis Leiva (sistemas) | 1d | 2017-08-01 A | 2017-08-01 A |  | 100% |  | 2017-08-01 | 2017-08-01 | 1d |  |  | start no earlier than 2017-08-01 |
| 52 | 1.1.2.1.1.3.1.6 | Informe de Pago - Luis Leiva (sistemas) | 1d | 2017-09-01 A | 2017-09-01 A |  | 100% |  | 2017-09-01 | 2017-09-01 | 1d |  |  | start no earlier than 2017-09-01 |
| 53 | 1.1.2.1.1.3.1.7 | Informe de Pago - Luis Leiva (sistemas) | 1d | 2017-10-02 A | 2017-10-02 A |  | 100% |  | 2017-10-02 | 2017-10-02 | 1d |  |  | start no earlier than 2017-10-02 |
| 54 | 1.1.2.1.1.3.1.8 | Informe de Pago - Luis Leiva (sistemas) | 1d | 2017-11-02 | 2017-11-02 |  |  |  | 2017-11-02 | 2017-11-02 | 1d | 40d |  | start no earlier than 2017-11-02 |
| 55 | 1.1.2.1.1.3.1.9 | Informe de Pago - Luis Leiva (sistemas) | 1d | 2017-12-01 | 2017-12-01 |  |  |  | 2017-12-01 | 2017-12-01 | 1d | 19d |  | start no earlier than 2017-12-01 |
| 56 | 1.1.2.1.1.3.1.10 | Informe de Pago - Luis Leiva (sistemas) | 1d | 2017-03-09 | 2017-03-09 |  |  |  | 2017-03-09 | 2017-03-09 | 1d | 203d |  |  |
| 57 | 1.1.2.1.1.3.1.11 | Informe de Pago - Fernando (programador) | 1d | 2017-06-27 A | 2017-06-27 A |  | 100% |  | 2017-06-27 | 2017-06-27 | 1d |  |  | start no earlier than 2017-06-27 |
| 58 | 1.1.2.1.1.3.1.12 | Informe de Pago - Fernando (programador) | 1d | 2017-07-24 A | 2017-07-24 A |  | 100% |  | 2017-07-24 | 2017-07-24 | 1d |  |  | start no earlier than 2017-07-24 |
| 59 | 1.1.2.1.1.3.1.13 | Informe de Pago - Fernando (programador) | 1d | 2017-08-28 A | 2017-08-28 A |  | 100% |  | 2017-08-28 | 2017-08-28 | 1d |  |  | start no earlier than 2017-08-28 |
| 60 | 1.1.2.1.1.3.1.14 | Informe de Pago - Fernando (programador) | 1d | 2017-09-26 A | 2017-09-26 A |  | 100% |  | 2017-09-26 | 2017-09-26 | 1d |  |  | start no earlier than 2017-09-26 |
| 61 | 1.1.2.1.1.3.1.15 | Informe de Pago - Fernando (programador) | 1d | 2017-10-25 | 2017-10-25 |  |  |  | 2017-10-25 | 2017-10-25 | 1d | 45d |  | start no earlier than 2017-10-25 |
| 62 | 1.1.2.1.1.3.1.16 | Informe de Pago - Fernando (programador) | 1d | 2017-11-24 | 2017-11-24 |  |  |  | 2017-11-24 | 2017-11-24 | 1d | 24d |  | start no earlier than 2017-11-24 |
| 63 | 1.1.2.1.1.3.1.17 | Informe de Pago - Fernando (programador) | 1d | 2017-12-26 | 2017-12-26 |  |  |  | 2017-12-26 | 2017-12-26 | 1d | 4d |  | start no earlier than 2017-12-26 |
| 64 | 1.1.2.1.1.3.1.18 | Informe de Pago - César (programador) | 1d | 2017-06-27 A | 2017-06-27 A |  | 100% |  | 2017-06-27 | 2017-06-27 | 1d |  |  | start no earlier than 2017-06-27 |
| 65 | 1.1.2.1.1.3.1.19 | Informe de Pago - César (programador) | 1d | 2017-07-24 A | 2017-07-24 A |  | 100% |  | 2017-07-24 | 2017-07-24 | 1d |  |  | start no earlier than 2017-07-24 |
| 66 | 1.1.2.1.1.3.1.20 | Informe de Pago - César (programador) | 1d | 2017-08-28 A | 2017-08-28 A |  | 100% |  | 2017-08-28 | 2017-08-28 | 1d |  |  | start no earlier than 2017-08-28 |
| 67 | 1.1.2.1.1.3.1.21 | Informe de Pago - César (programador) | 1d | 2017-09-26 A | 2017-09-26 A |  | 100% |  | 2017-09-26 | 2017-09-26 | 1d |  |  | start no earlier than 2017-09-26 |
| 68 | 1.1.2.1.1.3.1.22 | Informe de Pago - César (programador) | 1d | 2017-10-25 | 2017-10-25 |  |  |  | 2017-10-25 | 2017-10-25 | 1d | 45d |  | start no earlier than 2017-10-25 |
| 69 | 1.1.2.1.1.3.1.23 | Informe de Pago - César (programador) | 1d | 2017-11-24 | 2017-11-24 |  |  |  | 2017-11-24 | 2017-11-24 | 1d | 24d |  | start no earlier than 2017-11-24 |

| ID | WBS | Task | Duration | Start | Finish | Complete | Remaining | Baseline start | Baseline finish | Baseline duration | Total slack | Constraint |
| --- | --- | --- | --- | --- | --- | --- | --- | --- | --- | --- | --- | --- |
| 70 | 1.1.2.1.1.3.2 | **B. Persona Jurídica** | 20d | 2017-11-30 | 2017-12-29 |  |  | 2017-11-30 | 2017-12-29 | 20d | 1d |  |
| 71 | 1.1.2.1.1.3.2.1 | Entregable 1 | 1d | 2017-11-30 | 2017-11-30 |  |  | 2017-11-30 | 2017-11-30 | 1d | 23d | start no earlier than 2017-11-30 |
| 72 | 1.1.2.1.1.3.2.2 | Entregable 2 | 1d | 2017-12-29 | 2017-12-29 |  |  | 2017-12-29 | 2017-12-29 | 1d | 4d | start no earlier than 2017-12-29 |
| 73 | 1.1.3 | **1.3 Seguimiento y Control** | 127d | 2017-06-30 A | 2018-01-01 | 26% | 94.07d | 2017-06-30 | 2018-01-01 | 127d | 0d |  |
| 74 | 1.1.3.1 | **1.3.1 Informe Mensual** | 127d | 2017-06-30 A | 2018-01-01 | 14% | 108.86d | 2017-06-30 | 2018-01-01 | 127d | 0d |  |
| 75 | 1.1.3.1.1 | Informe Mensual 1 | 1d | 2017-06-30 | 2017-06-30 |  |  | 2017-06-30 | 2017-06-30 | 1d | 129d | start no earlier than 2017-06-30 |
| 76 | 1.1.3.1.2 | Informe Mensual 2 | 1d | 2017-07-31 A | 2017-07-31 A | 100% |  | 2017-07-31 | 2017-07-31 | 1d |  | start no earlier than 2017-07-30 |
| 77 | 1.1.3.1.3 | Informe Mensual 3 | 1d | 2017-08-31 | 2017-08-31 |  |  | 2017-08-31 | 2017-08-31 | 1d | 87d | start no earlier than 2017-08-30 |
| 78 | 1.1.3.1.4 | Informe Mensual 4 | 1d | 2017-10-02 | 2017-10-02 |  |  | 2017-10-02 | 2017-10-02 | 1d | 65d | start no earlier than 2017-09-30 |
| 79 | 1.1.3.1.5 | Informe Mensual 5 | 1d | 2017-10-30 | 2017-10-30 |  |  | 2017-10-30 | 2017-10-30 | 1d | 45d | start no earlier than 2017-10-30 |
| 80 | 1.1.3.1.6 | Informe Mensual 6 | 1d | 2017-11-30 | 2017-11-30 |  |  | 2017-11-30 | 2017-11-30 | 1d | 23d | start no earlier than 2017-11-30 |
| 81 | 1.1.3.1.7 | Informe Mensual 7 | 1d | 2018-01-01 | 2018-01-01 |  |  | 2018-01-01 | 2018-01-01 | 1d | 0d | start no earlier than 2017-12-30 |
| 82 | 1.1.3.2 | **1.3.2 Reuniones de seguimiento** | 92d | 2017-08-18 A | 2017-12-29 | 30% | 64.4d | 2017-08-18 | 2017-12-29 | 92d | 1d |  |
| 83 | 1.1.3.2.1 | Reuniones de seguimiento 1 | 1d | 2017-08-18 A | 2017-08-18 A | 100% |  | 2017-08-18 | 2017-08-18 | 1d |  | start no earlier than 2017-08-18 |
| 84 | 1.1.3.2.2 | Reuniones de seguimiento 2 | 1d | 2017-08-25 A | 2017-08-25 A | 100% |  | 2017-08-25 | 2017-08-25 | 1d |  | start no earlier than 2017-08-25 |
| 85 | 1.1.3.2.3 | Reuniones de seguimiento 3 | 1d | 2017-09-01 A | 2017-09-01 A | 100% |  | 2017-09-01 | 2017-09-01 | 1d |  | start no earlier than 2017-09-01 |
| 86 | 1.1.3.2.4 | Reuniones de seguimiento 4 | 1d | 2017-09-08 A | 2017-09-08 A | 100% |  | 2017-09-08 | 2017-09-08 | 1d |  | start no earlier than 2017-09-08 |
| 87 | 1.1.3.2.5 | Reuniones de seguimiento 5 | 1d | 2017-09-15 A | 2017-09-15 A | 100% |  | 2017-09-15 | 2017-09-15 | 1d |  | start no earlier than 2017-09-15 |
| 88 | 1.1.3.2.6 | Reuniones de seguimiento 6 | 1d | 2017-09-22 A | 2017-09-22 A | 100% |  | 2017-09-22 | 2017-09-22 | 1d |  | start no earlier than 2017-09-22 |
| 89 | 1.1.3.2.7 | Reuniones de seguimiento 7 | 1d | 2017-09-29 | 2017-09-29 |  |  | 2017-09-29 | 2017-09-29 | 1d | 66d | start no earlier than 2017-09-29 |
| 90 | 1.1.3.2.8 | Reuniones de seguimiento 8 | 1d | 2017-10-06 | 2017-10-06 |  |  | 2017-10-06 | 2017-10-06 | 1d | 61d | start no earlier than 2017-10-06 |
| 91 | 1.1.3.2.9 | Reuniones de seguimiento 9 | 1d | 2017-10-13 | 2017-10-13 |  |  | 2017-10-13 | 2017-10-13 | 1d | 56d | start no earlier than 2017-10-13 |
| 92 | 1.1.3.2.10 | Reuniones de seguimiento 10 | 1d | 2017-10-20 | 2017-10-20 |  |  | 2017-10-20 | 2017-10-20 | 1d | 51d | start no earlier than 2017-10-20 |
| 93 | 1.1.3.2.11 | Reuniones de seguimiento 11 | 1d | 2017-10-27 | 2017-10-27 |  |  | 2017-10-27 | 2017-10-27 | 1d | 46d | start no earlier than 2017-10-27 |
| 94 | 1.1.3.2.12 | Reuniones de seguimiento 12 | 1d | 2017-11-03 | 2017-11-03 |  |  | 2017-11-03 | 2017-11-03 | 1d | 42d | start no earlier than 2017-11-03 |
| 95 | 1.1.3.2.13 | Reuniones de seguimiento 13 | 1d | 2017-11-10 | 2017-11-10 |  |  | 2017-11-10 | 2017-11-10 | 1d | 37d | start no earlier than 2017-11-10 |
| 96 | 1.1.3.2.14 | Reuniones de seguimiento 14 | 1d | 2017-11-17 | 2017-11-17 |  |  | 2017-11-17 | 2017-11-17 | 1d | 32d | start no earlier than 2017-11-17 |
| 97 | 1.1.3.2.15 | Reuniones de seguimiento 15 | 1d | 2017-11-24 | 2017-11-24 |  |  | 2017-11-24 | 2017-11-24 | 1d | 27d | start no earlier than 2017-11-24 |
| 98 | 1.1.3.2.16 | Reuniones de seguimiento 16 | 1d | 2017-12-01 | 2017-12-01 |  |  | 2017-12-01 | 2017-12-01 | 1d | 22d | start no earlier than 2017-12-01 |
| 99 | 1.1.3.2.17 | Reuniones de seguimiento 17 | 1d | 2017-12-11 | 2017-12-11 |  |  | 2017-12-11 | 2017-12-11 | 1d | 17d | start no earlier than 2017-12-08 |
| 100 | 1.1.3.2.18 | Reuniones de seguimiento 18 | 1d | 2017-12-15 | 2017-12-15 |  |  | 2017-12-15 | 2017-12-15 | 1d | 13d | start no earlier than 2017-12-15 |
| 101 | 1.1.3.2.19 | Reuniones de seguimiento 19 | 1d | 2017-12-22 | 2017-12-22 |  |  | 2017-12-22 | 2017-12-22 | 1d | 8d | start no earlier than 2017-12-22 |
| 102 | 1.1.3.2.20 | Reuniones de seguimiento 20 | 1d | 2017-12-29 | 2017-12-29 |  |  | 2017-12-29 | 2017-12-29 | 1d | 4d | start no earlier than 2017-12-29 |

| ID | WBS | Task | Duration | Start | Finish | Predecessors | Complete | Remaining | Baseline start | Baseline finish | Baseline duration | Total slack | Constraint | Work | Actual work |
| --- | --- | --- | --- | --- | --- | --- | --- | --- | --- | --- | --- | --- | --- | --- | --- |
| 103 | 1.1.4 | **1.4 Cierre** | 1d | 2017-12-29 | 2017-12-29 |  |  |  | 2017-12-29 | 2017-12-29 | 1d | 1d |  |  |  |
| 104 | 1.1.4.1 | 1.4.1 Informe de Cierre | 1d | 2017-12-29 | 2017-12-29 |  |  |  | 2017-12-29 | 2017-12-29 | 1d | 1d | start no earlier than 2017-12-29 |  |  |
| 105 | 1.2 | **2. ACTIVIDADES DE INGENIERÍA** | 198d | 2017-03-09 A | 2017-12-21 |  | 69% | 61.5d | 2017-03-09 | 2017-12-29 | 203d | 6d |  | 3008.4h | 1882.32h |
| 106 | 1.2.1 | **2.1 Planificación** | 58d | 2017-03-09 A | 2017-06-01 A |  | 100% |  | 2017-03-09 | 2017-06-01 | 58d |  |  |  |  |
| 107 | 1.2.1.1 | **2.1.1 Relevamiento de Información** | 58d | 2017-03-09 A | 2017-06-01 A |  | 100% |  | 2017-03-09 | 2017-06-01 | 58d |  |  |  |  |
| 108 | 1.2.1.1.1 | Reuniones con los involucrados | 23d | 2017-03-09 A | 2017-04-10 A |  | 100% |  | 2017-03-09 | 2017-04-10 | 23d |  |  |  |  |
| 109 | 1.2.1.1.2 | Elaboración del AS IS | 25d | 2017-03-09 A | 2017-04-12 A |  | 100% |  | 2017-03-09 | 2017-04-12 | 25d |  |  |  |  |
| 110 | 1.2.1.1.3 | Revisión (Usuario - GOP - GPY - GIN) | 10d | 2017-04-17 A | 2017-04-28 A | 109 | 100% |  | 2017-04-17 | 2017-04-28 | 10d |  |  |  |  |
| 111 | 1.2.1.1.4 | Levantamiento de observaciones | 11d | 2017-05-02 A | 2017-05-16 A | 110 | 100% |  | 2017-05-02 | 2017-05-16 | 11d |  |  |  |  |
| 112 | 1.2.1.1.5 | Validación Final del AS IS | 10d | 2017-05-17 A | 2017-05-30 A | 111 | 100% |  | 2017-05-17 | 2017-05-30 | 10d |  |  |  |  |
| 113 | 1.2.1.1.6 | Aprobación del Relevamiento de Información | 2d | 2017-05-31 A | 2017-06-01 A | 112 | 100% |  | 2017-05-31 | 2017-06-01 | 2d |  |  |  |  |
| 114 | 1.2.2 | **2.2 Modelado de Procesos** | 118d | 2017-04-11 A | 2017-09-29 |  | 90% | 11.61d | 2017-04-11 | 2017-09-29 | 118d | 63d |  |  |  |
| 115 | 1.2.2.1 | **2.2.1 Ficha Técnica del Proceso** | 35d | 2017-04-11 A | 2017-06-01 A |  | 100% |  | 2017-04-11 | 2017-06-01 | 35d |  |  |  |  |
| 116 | 1.2.2.1.1 | Elaboración del TO BE | 9d | 2017-04-11 A | 2017-04-25 A |  | 100% |  | 2017-04-11 | 2017-04-25 | 9d |  | start no earlier than 2017-04-11 |  |  |
| 117 | 1.2.2.1.2 | Revisión (Usuario - GOP - GPY - GIN) | 7d | 2017-04-26 A | 2017-05-05 A | 116 | 100% |  | 2017-04-26 | 2017-05-05 | 7d |  |  |  |  |
| 118 | 1.2.2.1.3 | Levantamiento de observaciones | 4d | 2017-05-08 A | 2017-05-11 A | 117 | 100% |  | 2017-05-08 | 2017-05-11 | 4d |  |  |  |  |
| 119 | 1.2.2.1.4 | Validación Final del TO BE | 2d | 2017-05-12 A | 2017-05-15 A | 118 | 100% |  | 2017-05-12 | 2017-05-15 | 2d |  |  |  |  |
| 120 | 1.2.2.1.5 | Ficha Técnica del Proceso | 5d | 2017-05-16 A | 2017-05-22 A | 119 | 100% |  | 2017-05-16 | 2017-05-22 | 5d |  |  |  |  |
| 121 | 1.2.2.1.6 | Revisión de GOP | 2d | 2017-05-23 A | 2017-05-24 A | 120 | 100% |  | 2017-05-23 | 2017-05-24 | 2d |  |  |  |  |
| 122 | 1.2.2.1.7 | Levantamiento de observaciones | 2d | 2017-05-25 A | 2017-05-26 A | 121 | 100% |  | 2017-05-25 | 2017-05-26 | 2d |  |  |  |  |
| 123 | 1.2.2.1.8 | Validación Final de la Ficha Técnica de Proceso | 2d | 2017-05-29 A | 2017-05-30 A | 122 | 100% |  | 2017-05-29 | 2017-05-30 | 2d |  |  |  |  |
| 124 | 1.2.2.1.9 | Aprobación del documento | 2d | 2017-05-31 A | 2017-06-01 A | 123 | 100% |  | 2017-05-31 | 2017-06-01 | 2d |  |  |  |  |
| 125 | 1.2.2.2 | **2.2.2 Documento de Soporte** | 26d | 2017-08-24 A | 2017-09-29 |  | 77% | 6d | 2017-08-24 | 2017-09-29 | 26d | 63d |  |  |  |
| 126 | 1.2.2.2.1 | **Procedimiento de Suspensión** | 9d | 2017-08-24 A | 2017-09-06 |  | 94% | 0.5d | 2017-08-24 | 2017-09-06 | 9d | 80d |  |  |  |
| 127 | 1.2.2.2.1.1 | Elaboración del procedimiento | 8d | 2017-08-24 A | 2017-09-05 A |  | 100% |  | 2017-08-24 | 2017-09-05 | 8d |  | finish no earlier than 2017-09-05 |  |  |
| 128 | 1.2.2.2.1.2 | Aprobación del documento | 1d | 2017-09-06 A | 2017-09-06 | 127 | 50% | 0.5d | 2017-09-06 | 2017-09-06 | 1d | 80d |  |  |  |

| ID | WBS | Task | Duration | Start | Finish | Predecessors | Complete | Remaining | Baseline start | Baseline finish | Baseline duration | Total slack | Free slack | Constraint | Resources | Work | Actual work |
| --- | --- | --- | --- | --- | --- | --- | --- | --- | --- | --- | --- | --- | --- | --- | --- | --- | --- |
| 129 | 1.2.2.2.2 | **Procedimiento de Tercería** | 8d | 2017-09-07 A | 2017-09-18 |  | 94% | 0.5d | 2017-09-07 | 2017-09-18 | 8d | 4d |  |  |  |  |  |
| 130 | 1.2.2.2.2.1 | Elaboración del procedimiento | 7d | 2017-09-07 A | 2017-09-15 A | 128 | 100% |  | 2017-09-07 | 2017-09-15 | 7d |  |  |  |  |  |  |
| 131 | 1.2.2.2.2.2 | Aprobación del documento | 1d | 2017-09-18 A | 2017-09-18 | 130 | 50% | 0.5d | 2017-09-18 | 2017-09-18 | 1d | 4d | 0d |  |  |  |  |
| 132 | 1.2.2.2.3 | **Procedimiento de Expediente Coactivo** | 9d | 2017-09-19 A | 2017-09-29 |  | 44% | 5d | 2017-09-19 | 2017-09-29 | 9d | 63d |  |  |  |  |  |
| 133 | 1.2.2.2.3.1 | Elaboración del procedimiento | 8d | 2017-09-19 A | 2017-09-28 | 131 | 50% | 4d | 2017-09-19 | 2017-09-28 | 8d | 63d | 0d |  |  |  |  |
| 134 | 1.2.2.2.3.2 | Aprobación del documento | 1d | 2017-09-29 | 2017-09-29 | 133 |  |  | 2017-09-29 | 2017-09-29 | 1d | 63d |  |  |  |  |  |
| 135 | 1.2.3 | **2.3 Analisis y Diseño de Sistema** | 101d | 2017-06-02 A | 2017-10-25 |  | 82% | 17.69d | 2017-03-09 | 2017-09-18 | 132d | 45d |  |  |  | 805.2h | 609.6h |
| 136 | 1.2.3.1 | **2.3.1 Definición Funcional (GA)** | 19d | 2017-06-02 A | 2017-06-28 A |  | 100% |  | 2017-06-02 | 2017-06-28 | 19d |  |  |  |  |  |  |
| 137 | 1.2.3.1.1 | Elaboración de la Definición Funcional | 10d | 2017-06-02 A | 2017-06-15 A |  | 100% |  | 2017-06-02 | 2017-06-15 | 10d |  |  |  |  |  |  |
| 138 | 1.2.3.1.2 | Revisión de GIN GOP y Usuario | 1d | 2017-06-16 A | 2017-06-16 A | 137 | 100% |  | 2017-06-16 | 2017-06-16 | 1d |  |  |  |  |  |  |
| 139 | 1.2.3.1.3 | Levantamiento de Observaciones de la DF | 4d | 2017-06-19 A | 2017-06-22 A | 138 | 100% |  | 2017-06-19 | 2017-06-22 | 4d |  |  |  |  |  |  |
| 140 | 1.2.3.1.4 | Validación Final DF (Usuario, GOP y GIN) | 3d | 2017-06-23 A | 2017-06-27 A | 139 | 100% |  | 2017-06-23 | 2017-06-27 | 3d |  |  | start no earlier than 2017-03-09 |  |  |  |
| 141 | 1.2.3.1.5 | Aprobación del Documento | 1d | 2017-06-28 A | 2017-06-28 A | 140 | 100% |  | 2017-06-28 | 2017-06-28 | 1d |  |  |  |  |  |  |
| 142 | 1.2.3.2 | **2.3.2 Definición Funcional (AMI)** | 16d | 2017-06-14 A | 2017-07-06 A |  | 100% |  | 2017-06-14 | 2017-07-06 | 16d |  |  |  |  |  |  |
| 143 | 1.2.3.2.1 | Elaboración de la Definición Funcional | 11d | 2017-06-14 A | 2017-06-28 A |  | 100% |  | 2017-06-14 | 2017-06-28 | 11d |  |  | start no earlier than 2017-06-14 |  |  |  |
| 144 | 1.2.3.2.2 | Revisión de GIN GOP y Usuario | 2d | 2017-06-29 A | 2017-06-30 A | 143 | 100% |  | 2017-06-29 | 2017-06-30 | 2d |  |  |  |  |  |  |
| 145 | 1.2.3.2.3 | Levantamiento de Observaciones de la DF | 2d | 2017-07-03 A | 2017-07-04 A | 144 | 100% |  | 2017-07-03 | 2017-07-04 | 2d |  |  |  |  |  |  |
| 146 | 1.2.3.2.4 | Validación Final DF (Usuario, GOP y GIN) | 1d | 2017-07-05 A | 2017-07-05 A | 145 | 100% |  | 2017-07-05 | 2017-07-05 | 1d |  |  | finish no earlier than 2017-06-28 |  |  |  |
| 147 | 1.2.3.2.5 | Aprobación del Documento | 1d | 2017-07-06 A | 2017-07-06 A | 146 | 100% |  | 2017-07-06 | 2017-07-06 | 1d |  |  |  |  |  |  |
| 148 | 1.2.3.3 | **2.3.3 Definición Funcional (Exp Virtual)** | 23d | 2017-07-07 A | 2017-08-09 A |  | 100% |  | 2017-07-07 | 2017-08-09 | 23d |  |  |  |  | 184h | 184h |
| 149 | 1.2.3.3.1 | Elaboración de la Definición Funcional | 9d | 2017-07-07 A | 2017-07-19 A | 147 | 100% |  | 2017-07-07 | 2017-07-19 | 9d |  |  |  | Luis Leiva | 72h | 72h |
| 150 | 1.2.3.3.2 | Revisión de GIN, GOP y Usuario | 2d | 2017-07-20 A | 2017-07-21 A | 149 | 100% |  | 2017-07-20 | 2017-07-21 | 2d |  |  |  | Luis Leiva; Marjorie Gil [50%]; Wilson R [50%] | 32h | 32h |
| 151 | 1.2.3.3.3 | Levantamiento de Observaciones de la DF | 2d | 2017-07-24 A | 2017-07-25 A | 150 | 100% |  | 2017-07-24 | 2017-07-25 | 2d |  |  |  | Luis Leiva | 16h | 16h |
| 152 | 1.2.3.3.4 | Validación Final DF (Usuario, GOP y GIN) | 2d | 2017-08-02 A | 2017-08-03 A | 151 | 100% |  | 2017-08-02 | 2017-08-03 | 2d |  |  | start no earlier than 2017-08-02 | Luis Leiva; Marjorie Gil [50%]; Usuario; Wilson R [50%] | 48h | 48h |
| 153 | 1.2.3.3.5 | Aprobación del Documento | 4d | 2017-08-04 A | 2017-08-09 A | 152 | 100% |  | 2017-08-04 | 2017-08-09 | 4d |  |  | finish no earlier than 2017-08-09 | América B [50%] | 16h | 16h |

| ID | WBS | Task | Type | Duration | Start | Finish | Predecessors | Complete | Remaining | Baseline start | Baseline finish | Baseline duration | Total slack | Free slack | Constraint | Resources | Work | Actual work |
| --- | --- | --- | --- | --- | --- | --- | --- | --- | --- | --- | --- | --- | --- | --- | --- | --- | --- | --- |
| 154 | 1.2.3.4 | **2.3.4 Documento Técnico Exp Virtual** |  | 64d | 2017-07-26 A | 2017-10-25 |  | 92% | 5.17d | 2017-03-09 | 2017-09-18 | 131.82d | 45d |  |  |  | 369.2h | 344h |
| 155 | 1.2.3.4.1 | Elaboración del DT |  | 37d | 2017-07-26 A | 2017-09-18 A |  | 100% |  | 2017-07-26 | 2017-08-29 | 25d |  |  | finish no earlier than 2017-09-18 | Luis Leiva | 296h | 296h |
| 156 | 1.2.3.4.2 | Revisión del DT |  | 6d | 2017-09-19 A | 2017-09-26 A | 155 | 100% |  |  |  |  |  |  |  | Wilson R [50%] | 24h | 24h |
| 157 | 1.2.3.4.3 | Revisión de GIN (Arquitectura /Modelo de Datos) |  | 3d | 2017-10-19 A | 2017-10-23 A |  | 100% |  | 2017-09-01 | 2017-09-06 | 3d |  |  | finish no earlier than 2017-10-23 | Edgar Marquez | 24h | 24h |
| 158 | 1.2.3.4.4 | Levantamiento de Observaciones |  | 3d | 2017-09-21 A | 2017-10-25 |  | 60% | 1.2d | 2017-03-09 | 2017-09-08 | 3d | 45d |  | finish no earlier than 2017-10-25 |  |  |  |
| 159 | 1.2.3.4.5 | Validación Final |  | 2d | 2017-09-27 | 2017-09-28 |  |  |  | 2017-09-08 | 2017-09-14 | 4d | 66d | 0d | start no earlier than 2017-09-27 | Edgar Marquez [50%]; Wilson R [50%] | 16h |  |
| 160 | 1.2.3.4.6 | Aprobación del documento |  | 1d | 2017-09-29 | 2017-09-29 | 159 |  |  | 2017-09-14 | 2017-09-18 | 2d | 66d |  |  | Edgar Marquez [50%]; Wilson R [15%]; Celis [50%] | 9.2h |  |
| 161 | 1.2.3.5 | **2.3.5 Documento Técnico SGD** |  | 30d | 2017-08-07 A | 2017-09-18 |  | 34% | 19.8d | 2017-08-07 | 2017-09-18 | 30d | 72d |  |  |  | 252h | 81.6h |
| 162 | 1.2.3.5.1 | Elaboración de la DT |  | 17d | 2017-08-07 A | 2017-08-29 |  | 60% | 6.8d | 2017-08-07 | 2017-08-29 | 17d | 75d | 0d | start no earlier than 2017-08-07 | Luis Leiva | 136h | 81.6h |
| 163 | 1.2.3.5.2 | Revisión de GIN (Arquitectura /Modelo de Datos) |  | 3d | 2017-08-31 | 2017-09-04 | 162 |  |  | 2017-08-31 | 2017-09-04 | 3d | 75d | 0d |  | Celis; Edgar Marquez; Wilson R [50%] | 60h |  |
| 164 | 1.2.3.5.3 | Levantamiento de Observaciones |  | 3d | 2017-09-05 | 2017-09-07 | 163 |  |  | 2017-09-05 | 2017-09-07 | 3d | 75d | 0d |  | Luis Leiva [50%] | 12h |  |
| 165 | 1.2.3.5.4 | Revisión del Resposable del SGD |  | 3d | 2017-09-08 | 2017-09-12 | 164 |  |  | 2017-09-08 | 2017-09-12 | 3d | 75d | 0d |  |  |  |  |
| 166 | 1.2.3.5.5 | Validación Final |  | 3d | 2017-09-13 | 2017-09-15 | 165 |  |  | 2017-09-13 | 2017-09-15 | 3d | 75d | 0d |  | Celis [50%]; Edgar Marquez [50%]; Wilson R [50%] | 32h |  |
| 167 | 1.2.3.5.6 | Aprobación del documento |  | 1d | 2017-09-18 | 2017-09-18 | 166 |  |  | 2017-09-18 | 2017-09-18 | 1d | 75d |  |  | Edgar Marquez [50%]; Luis Leiva [50%]; Wilson R [50%] | 12h |  |
| 168 | 1.2.4 | **2.4 Construcción** |  | 125d | 2017-06-19 A | 2017-12-15 |  | 54% | 57.49d | 2017-06-19 | 2017-12-20 | 127.9d | 10d |  |  |  | 2203.2h | 1272.72h |
| 169 | 1.2.4.1 | **2.4.1 Expediente Coactivo Virtual** |  | 111d | 2017-07-10 A | 2017-12-15 |  | 62% | 42.22d | 2017-07-10 | 2017-11-30 | 101d | 10d |  |  |  | 1660h | 1066.72h |
| 170 | 1.2.4.1.1 | **2.4.1.1 Iteración 1 - Generación de archivos PDF** |  | 77d | 2017-07-10 A | 2017-10-26 |  | 85% | 11.52d | 2017-07-10 | 2017-10-16 | 69d | 44d |  |  |  | 1138h | 1006.4h |
| 171 | 1.2.4.1.1.1 | **A. Desarrollo** |  | 62d | 2017-07-10 A | 2017-10-05 |  | 98% | 1.36d | 2017-07-10 | 2017-09-25 | 54d | 29d |  |  |  | 1024h | 1006.4h |
| 172 | 1.2.4.1.1.1.1 | Generación de archivos PDF |  | 29d | 2017-07-10 A | 2017-08-18 A |  | 100% |  | 2017-07-10 | 2017-08-18 | 29d |  |  | start no earlier than 2017-07-10 | César A | 232h | 232h |
| 173 | 1.2.4.1.1.1.2 | **Cortado de archivos PDF** |  | 32.88d | 2017-07-10 A | 2017-08-24 A |  | 100% |  | 2017-07-10 | 2017-08-24 | 32.88d |  |  |  | Fernando B | 488h | 488h |
| 174 | 1.2.4.1.1.1.2.1 | DLL que realiza el corte del PDF |  | 16d | 2017-07-10 A | 2017-08-01 A |  | 100% |  | 2017-07-10 | 2017-08-01 | 16d |  |  |  | Fernando B | 128h | 128h |
| 175 | 1.2.4.1.1.1.2.2 | Servicio windows y web para la ejecución automática |  | 8d | 2017-08-02 A | 2017-08-11 A | 174 | 100% |  | 2017-08-02 | 2017-08-11 | 8d |  |  |  | Fernando B | 64h | 64h |
| 176 | 1.2.4.1.1.1.2.3 | Revisión de arquitectura |  | 2d | 2017-08-14 A | 2017-08-15 A | 175 | 100% |  | 2017-08-14 | 2017-08-15 | 2d |  |  |  | Ronald Raico | 16h | 16h |
| 177 | 1.2.4.1.1.1.2.4 | Subsanación de observaciones |  | 7d | 2017-08-15 A | 2017-08-24 A | 176 | 100% |  | 2017-08-15 | 2017-08-24 | 7d |  |  |  | Fernando B | 56h | 56h |
| 178 | 1.2.4.1.1.1.3 | Implementar la generación de archivo PDF en RS |  | 2d | 2017-08-21 A | 2017-08-22 A | 172 | 100% |  | 2017-08-21 | 2017-08-22 | 2d |  |  | start no earlier than 2017-08-21 | César A | 16h | 16h |
| 179 | 1.2.4.1.1.1.4 | Implementar generación de archivo PDF en Copia |  | 1d | 2017-08-23 A | 2017-08-23 A | 178 | 100% |  | 2017-08-23 | 2017-08-23 | 1d |  |  |  | César A | 8h | 8h |
| 180 | 1.2.4.1.1.1.5 | Implementar la generación de archivo PDF en CIR y REC Tránsito |  | 1d | 2017-08-24 A | 2017-08-24 A | 179 | 100% |  | 2017-08-24 | 2017-08-24 | 1d |  |  |  | César A | 8h | 8h |
| 181 | 1.2.4.1.1.1.6 | Revisión código fuente |  | 1d | 2017-08-25 A | 2017-08-25 A | 180 | 100% |  | 2017-08-25 | 2017-08-25 | 1d |  |  |  | Edgar Marquez | 8h | 8h |
| 182 | 1.2.4.1.1.1.7 | Levantamiento de observaciones |  | 3d | 2017-08-28 A | 2017-08-31 A | 181 | 100% |  | 2017-08-28 | 2017-08-31 | 3d |  |  |  | César A | 24h | 24h |
| 183 | 1.2.4.1.1.1.8 | Implementar la generación de archivo PDF en RMC |  | 5d | 2017-09-01 A | 2017-09-07 A | 182 | 100% |  | 2017-09-01 | 2017-09-07 | 5d |  |  |  | César A | 40h | 40h |
| 184 | 1.2.4.1.1.1.9 | Implementar la generación de archivo PDF en RIEF |  | 3d | 2017-09-08 A | 2017-09-12 A | 183 | 100% |  | 2017-09-08 | 2017-09-11 | 2d |  |  |  | César A | 24h | 24h |
| 185 | 1.2.4.1.1.1.10 | Implementar la generación de archivo PDF Resolución de Tasación en Remates | manual | 2d | 2017-07-10 | 2017-07-11 |  |  |  | 2017-09-12 | 2017-09-13 | 2d |  |  |  | César A | 16h |  |
| 186 | 1.2.4.1.1.1.11 | Implementar la generación de archivo PDF en Esquela de Entrega - módulo Depósito |  | 3d | 2017-09-13 A | 2017-09-15 A | 184 | 100% |  | 2017-09-14 | 2017-09-18 | 3d |  |  |  | César A | 24h | 24h |
| 187 | 1.2.4.1.1.1.12 | Implementar la generación de archivo PDF en Acta de Secuestro Conservativo - módulo Depósito |  | 3d | 2017-09-18 A | 2017-09-20 A | 186 | 100% |  | 2017-09-19 | 2017-09-20 | 2d |  |  |  | César A | 24h | 24h |
| 188 | 1.2.4.1.1.1.13 | Revisión del Módulo de Remate |  | 3d | 2017-09-21 A | 2017-09-25 A | 187 | 100% |  |  |  |  |  |  |  | César A | 24h | 24h |
| 189 | 1.2.4.1.1.1.14 | Revisión de la Generación de PDF |  | 3d | 2017-09-26 A | 2017-09-28 A | 188 | 100% |  |  |  |  |  |  |  | César A | 24h | 24h |
| 190 | 1.2.4.1.1.1.15 | Revisión código fuente |  | 7d | 2017-09-26 A | 2017-10-04 A | 188 | 100% |  | 2017-09-21 | 2017-09-21 | 1d |  |  |  | Edgar Marquez | 56h | 56h |
| 191 | 1.2.4.1.1.1.16 | Levantamiento de observaciones |  | 1d | 2017-10-05 A | 2017-10-05 | 190 | 80% | 0.2d | 2017-09-22 | 2017-09-25 | 2d | 29d | 0d |  | César A | 8h | 6.4h |

Notes:
- 185: ANTES: / PDF de Nulidad: De acuerdo a lo indicado por el Lider Funcional, este documento no será considerado por ser manual, en su lugar se considera el documento de remates (a partir del día 21.09.17. / Se retiradel desarrolllo debido a que no se cuenta a la fecha con progamador en JAVA. Se esta evaluando la posibilidad de conseguir un recurso en ello e incluirlo de manera posterior

| ID | WBS | Task | Duration | Start | Finish | Predecessors | Complete | Remaining | Baseline start | Baseline finish | Baseline duration | Total slack | Free slack | Constraint | Resources | Work | Actual work |
| --- | --- | --- | --- | --- | --- | --- | --- | --- | --- | --- | --- | --- | --- | --- | --- | --- | --- |
| 192 | 1.2.4.1.1.2 | **B. Pruebas** | 9.3d | 2017-10-06 | 2017-10-19 |  |  |  | 2017-09-26 | 2017-10-10 | 10.3d | 29d |  |  |  | 114h |  |
| 193 | 1.2.4.1.1.2.1 | Documentación para el pase | 1d | 2017-10-06 | 2017-10-06 | 191 |  |  | 2017-09-26 | 2017-09-28 | 3d | 29d | 0d |  | César A | 8h |  |
| 194 | 1.2.4.1.1.2.2 | Envío y Revisión por AF Calidad | 3d | 2017-10-09 | 2017-10-11 | 193 |  |  | 2017-09-29 | 2017-10-03 | 3d | 29d | 0d |  | AF Calidad | 24h |  |
| 195 | 1.2.4.1.1.2.3 | Levantamiento de Observaciones | 2d | 2017-10-12 | 2017-10-13 | 194 |  |  | 2017-10-04 | 2017-10-05 | 2d | 29d | 0d |  | César A | 16h |  |
| 196 | 1.2.4.1.1.2.4 | Pruebas con el equipo AE | 0.3d | 2017-10-16 | 2017-10-16 | 195 |  |  | 2017-10-06 | 2017-10-06 | 0.3d | 29d | 0d |  | César A; Luis Leiva; Wilson R [50%] | 6h |  |
| 197 | 1.2.4.1.1.2.5 | Pruebas de Aceptación (usuario) | 3d | 2017-10-16 | 2017-10-19 | 196 |  |  | 2017-10-06 | 2017-10-10 | 2d | 29d | 0d |  | César A; Luis Leiva; Wilson R [50%] | 60h |  |
| 198 | 1.2.4.1.1.3 | C. Pase a producción | 0.7d | 2017-10-19 | 2017-10-19 | 197 |  |  | 2017-10-10 | 2017-10-10 | 0.7d | 29d | 0d | start no earlier than 2017-03-09 |  |  |  |
| 199 | 1.2.4.1.1.4 | D. Seguimiento | 5d | 2017-10-20 | 2017-10-26 | 198 |  |  | 2017-10-11 | 2017-10-16 | 4d | 44d |  | start no earlier than 2017-09-07 |  |  |  |
| 200 | 1.2.4.1.2 | **2.4.1.2 Iteración 2** | 78d | 2017-08-25 A | 2017-12-15 |  | 14% | 67.31d | 2017-08-25 | 2017-11-30 | 68d | 10d |  |  |  | 522h | 60.32h |
| 201 | 1.2.4.1.2.1 | **A. Desarrollo** | 72d | 2017-08-25 A | 2017-12-06 |  | 17% | 59.66d | 2017-08-25 | 2017-11-16 | 58d | 16d |  |  |  | 432h | 60.32h |
| 202 | 1.2.4.1.2.1.1 | Diseño de pantallas propuestas | 5d | 2017-08-25 A | 2017-09-01 | 173 | 90% | 0.5d |  |  |  | 83d |  | start no earlier than 2017-08-25 | Fernando B | 40h | 36h |
| 203 | 1.2.4.1.2.1.2 | Visualizar documentos digitales del Expediente Coactivo Virtual | 8d | 2017-10-27 A | 2017-11-08 | 247 | 19% | 6.48d | 2017-08-25 | 2017-09-06 | 8d | 1.52d | 0d | start no earlier than 2017-08-25 | Fernando B | 64h | 12.16h |
| 204 | 1.2.4.1.2.1.3 | Solicitudes de Impresión de Expediente Coactivo | 8d | 2017-11-09 A | 2017-11-20 | 203 | 19% | 6.48d | 2017-10-23 | 2017-11-06 | 10d | 28d |  | start no earlier than 2017-10-23 | Fernando B | 64h | 12.16h |
| 205 | 1.2.4.1.2.1.4 | Ingresar documentos digitales manuales al Expediente Coactivo Virtual | 11d | 2017-11-06 | 2017-11-20 |  |  |  | 2017-11-07 | 2017-11-13 | 5d | 6d | 0d | start no earlier than 2017-11-06 | César A | 88h |  |
| 206 | 1.2.4.1.2.1.5 | Implementación de cuatro (4) Reportes | 7d | 2017-11-21 | 2017-11-29 | 205 |  |  | 2017-10-11 | 2017-11-13 | 23d | 6d | 0d |  | César A; Fernando B | 112h |  |
| 207 | 1.2.4.1.2.1.6 | Revisión en desarrollo | 2d | 2017-11-30 | 2017-12-01 | 206 |  |  | 2017-11-14 | 2017-11-14 | 1d | 16d | 0d |  | Edgar Marquez | 16h |  |
| 208 | 1.2.4.1.2.1.7 | Levantamiento de observaciones | 3d | 2017-12-04 | 2017-12-06 | 207 |  |  | 2017-11-15 | 2017-11-16 | 2d | 16d |  |  | César A; Fernando B | 48h |  |
| 209 | 1.2.4.1.2.2 | **B. Pruebas** | 5d | 2017-11-30 | 2017-12-06 |  |  |  | 2017-11-17 | 2017-11-24 | 5.5d | 6d |  |  |  | 90h |  |
| 210 | 1.2.4.1.2.2.1 | Documentación para el pase | 2d | 2017-11-30 | 2017-12-01 | 206 |  |  | 2017-11-17 | 2017-11-17 | 1d | 6d | 0d |  | Fernando B; César A | 32h |  |
| 211 | 1.2.4.1.2.2.2 | Envío y Revisión por AF Calidad | 1d | 2017-12-04 | 2017-12-04 | 210 |  |  | 2017-11-20 | 2017-11-21 | 2d | 6d | 0d |  | AF Calidad | 8h |  |
| 212 | 1.2.4.1.2.2.3 | Levantamiento de Observaciones | 1d | 2017-12-05 | 2017-12-05 | 211 |  |  | 2017-11-22 | 2017-11-22 | 1d | 6d | 0d |  | César A; Fernando B | 16h |  |
| 213 | 1.2.4.1.2.2.4 | Pruebas con el equipo AE | 0.25d | 2017-12-06 | 2017-12-06 | 212 |  |  | 2017-11-23 | 2017-11-23 | 0.5d | 6d | 0d |  | César A; Fernando B; Luis Leiva; Wilson R [50%] | 7h |  |
| 214 | 1.2.4.1.2.2.5 | Pruebas de Aceptación (usuario) | 0.75d | 2017-12-06 | 2017-12-06 | 213 |  |  | 2017-11-23 | 2017-11-24 | 1d | 6d | 0d |  | César A; Fernando B; Luis Leiva; Usuario; Wilson R [50%] | 27h |  |
| 215 | 1.2.4.1.2.3 | C. Pase a producción | 1d | 2017-12-07 | 2017-12-07 | 214 |  |  | 2017-11-24 | 2017-11-24 | 0.5d | 6d | 0d |  |  |  |  |
| 216 | 1.2.4.1.2.4 | D. Seguimiento | 5d | 2017-12-11 | 2017-12-15 | 215 |  |  | 2017-11-27 | 2017-11-30 | 4d | 6d | 0d |  |  |  |  |

| ID | WBS | Task | Duration | Start | Finish | Predecessors | Complete | Remaining | Baseline start | Baseline finish | Baseline duration | Total slack | Free slack | Constraint | Resources | Work | Actual work |
| --- | --- | --- | --- | --- | --- | --- | --- | --- | --- | --- | --- | --- | --- | --- | --- | --- | --- |
| 217 | 1.2.4.2 | **2.4.2 SGD - Atención de Solicitudes** | 102d | 2017-06-19 A | 2017-11-13 |  | 36% | 65.19d | 2017-06-19 | 2017-12-20 | 127.9d | 33d |  |  |  | 543.2h | 206h |
| 218 | 1.2.4.2.1 | **Iteración 1** | 16.5d | 2017-06-19 A | 2017-07-12 A |  | 100% |  | 2017-06-19 | 2017-07-12 | 16.5d |  |  |  |  | 120h | 120h |
| 219 | 1.2.4.2.1.1 | **A. Desarrollo** | 5d | 2017-06-19 A | 2017-06-23 A |  | 100% |  | 2017-06-19 | 2017-06-23 | 5d |  |  |  |  | 120h | 120h |
| 220 | 1.2.4.2.1.1.1 | Implementación de código de barras en el cargo de recepción | 5d | 2017-06-19 A | 2017-06-23 A |  | 100% |  | 2017-06-19 | 2017-06-23 | 5d |  |  | start no earlier than 2017-06-19 | César A; Fernando B; Luis Leiva | 120h | 120h |
| 221 | 1.2.4.2.1.2 | **B. Pruebas** | 8d | 2017-06-26 A | 2017-07-06 A |  | 100% |  | 2017-06-26 | 2017-07-06 | 8d |  |  |  |  |  |  |
| 222 | 1.2.4.2.1.2.1 | Documentación para el pase | 2d | 2017-06-26 A | 2017-06-27 A | 220 | 100% |  | 2017-06-26 | 2017-06-27 | 2d |  |  |  |  |  |  |
| 223 | 1.2.4.2.1.2.2 | Envío y Revisión por AF Calidad (Rev 1) | 1d | 2017-06-28 A | 2017-06-28 A | 222 | 100% |  | 2017-06-28 | 2017-06-28 | 1d |  |  |  |  |  |  |
| 224 | 1.2.4.2.1.2.3 | Levantamiento de Observaciones | 2d | 2017-06-30 A | 2017-07-03 A | 223 | 100% |  | 2017-06-30 | 2017-07-03 | 2d |  |  |  |  |  |  |
| 225 | 1.2.4.2.1.2.4 | Envío y Revisión por AF Calidad (Rev 2) | 2d | 2017-07-04 A | 2017-07-05 A | 224 | 100% |  | 2017-07-04 | 2017-07-05 | 2d |  |  |  |  |  |  |
| 226 | 1.2.4.2.1.2.5 | Pruebas con el equipo AE | 0.5d | 2017-07-06 A | 2017-07-06 A | 225 | 100% |  | 2017-07-06 | 2017-07-06 | 0.5d |  |  |  |  |  |  |
| 227 | 1.2.4.2.1.2.6 | Pruebas de Aceptación (usuario) | 0.5d | 2017-07-06 A | 2017-07-06 A | 226 | 100% |  | 2017-07-06 | 2017-07-06 | 0.5d |  |  |  |  |  |  |
| 228 | 1.2.4.2.1.3 | C. Pase a Producción | 0.5d | 2017-07-07 A | 2017-07-07 A | 227 | 100% |  | 2017-07-07 | 2017-07-07 | 0.5d |  |  |  |  |  |  |
| 229 | 1.2.4.2.1.4 | D. Seguimiento | 3d | 2017-07-07 A | 2017-07-12 A | 228 | 100% |  | 2017-07-07 | 2017-07-12 | 3d |  |  |  |  |  |  |
| 230 | 1.2.4.2.2 | **Iteración 2** | 41d | 2017-09-07 A | 2017-11-03 |  | 26% | 30.25d | 2017-09-07 | 2017-10-31 | 39d | 39d |  |  |  | 306h | 86h |
| 231 | 1.2.4.2.2.1 | **A. Desarrollo** | 30d | 2017-09-07 A | 2017-10-18 |  | 36% | 19.25d | 2017-09-07 | 2017-10-17 | 29d | 1.52d |  |  |  | 240h | 86h |
| 232 | 1.2.4.2.2.1.1 | Atención: Solicitar firmantes en proyecto respuesta | 5d | 2017-09-07 A | 2017-09-13 A |  | 100% |  | 2017-09-07 | 2017-09-13 | 5d |  |  | start no earlier than 2017-09-07 | Fernando B | 40h | 40h |
| 233 | 1.2.4.2.2.1.2 | Atención: Firma mecanizada en documento respuesta | 2d | 2017-09-14 A | 2017-09-15 A | 232 | 100% |  | 2017-09-14 | 2017-09-15 | 2d |  |  |  | Fernando B | 16h | 16h |
| 234 | 1.2.4.2.2.1.3 | Atención: Selecccionar efectos en proyecto respuesta | 5d | 2017-09-18 A | 2017-09-22 | 233 | 75% | 1.25d | 2017-09-18 | 2017-09-22 | 5d | 1.52d | 0d |  | Fernando B | 40h | 30h |
| 235 | 1.2.4.2.2.1.4 | Atención: Generar automáticamente el documento respuesta | 2d | 2017-09-25 | 2017-09-26 | 234 |  |  | 2017-09-25 | 2017-09-26 | 2d | 1.52d | 0d |  | Fernando B | 16h |  |
| 236 | 1.2.4.2.2.1.5 | Reporte Unificado No Tributario | 5d | 2017-09-27 | 2017-10-03 | 235 |  |  | 2017-09-27 | 2017-10-03 | 5d | 1.52d | 0d |  | Fernando B | 40h |  |
| 237 | 1.2.4.2.2.1.6 | Traslado del documento digitalizado al directorio de ubicación final | 5d | 2017-10-04 | 2017-10-10 | 236 |  |  | 2017-10-04 | 2017-10-10 | 5d | 1.52d | 0d |  | Fernando B | 40h |  |
| 238 | 1.2.4.2.2.1.7 | Visualizar el documento digitalizado | 2d | 2017-10-11 | 2017-10-12 | 237 |  |  | 2017-10-11 | 2017-10-12 | 2d | 1.52d | 0d |  | Fernando B | 16h |  |
| 239 | 1.2.4.2.2.1.8 | Revisión en Desarrollo | 2d | 2017-10-13 | 2017-10-16 | 238 |  |  | 2017-10-13 | 2017-10-13 | 1d | 1.52d | 0d |  | Edgar Marquez | 16h |  |
| 240 | 1.2.4.2.2.1.9 | Levantamiento de observaciones | 2d | 2017-10-17 | 2017-10-18 | 239 |  |  | 2017-10-16 | 2017-10-17 | 2d | 1.52d | 0d |  | Fernando B | 16h |  |

Notes:
- 235: Problemas en el SGD
- 236: Prroblemas en el SGD
- 237: Problemas en el SGD
- 238: Problemas en el SGD

| ID | WBS | Task | Duration | Start | Finish | Predecessors | Baseline start | Baseline finish | Baseline duration | Total slack | Free slack | Constraint | Resources | Work |
| --- | --- | --- | --- | --- | --- | --- | --- | --- | --- | --- | --- | --- | --- | --- |
| 241 | 1.2.4.2.2.2 | **B. Pruebas** | 5.5d | 2017-10-19 | 2017-10-26 |  | 2017-10-18 | 2017-10-25 | 5.5d | 1.52d |  |  |  | 66h |
| 242 | 1.2.4.2.2.2.1 | Documentación para el pase | 2d | 2017-10-19 | 2017-10-20 | 240 | 2017-10-18 | 2017-10-18 | 1d | 1.52d | 0d |  | Fernando B | 16h |
| 243 | 1.2.4.2.2.2.2 | Envío y Revisión por AF Calidad | 1d | 2017-10-23 | 2017-10-23 | 242 | 2017-10-19 | 2017-10-20 | 2d | 1.52d | 0d |  | AF Calidad | 8h |
| 244 | 1.2.4.2.2.2.3 | Levantamiento de Observaciones | 1d | 2017-10-24 | 2017-10-24 | 243 | 2017-10-23 | 2017-10-23 | 1d | 1.52d | 0d |  | Fernando B | 8h |
| 245 | 1.2.4.2.2.2.4 | Pruebas con el equipo AE | 0.5d | 2017-10-25 | 2017-10-25 | 244 | 2017-10-24 | 2017-10-24 | 0.5d | 1.52d | 0d |  | Fernando B; Luis Leiva; Wilson R [50%] | 10h |
| 246 | 1.2.4.2.2.2.5 | Pruebas de Aceptación (usuario) | 1d | 2017-10-25 | 2017-10-26 | 245 | 2017-10-24 | 2017-10-25 | 1d | 1.52d | 0d |  | Fernando B; Luis Leiva; Usuario | 24h |
| 247 | 1.2.4.2.2.3 | C. Pase a Producción | 0.5d | 2017-10-26 | 2017-10-26 | 246 | 2017-10-25 | 2017-10-25 | 0.5d | 1.52d | 0d |  |  |  |
| 248 | 1.2.4.2.2.4 | D. Seguimiento | 5d | 2017-10-27 | 2017-11-03 | 247 | 2017-10-26 | 2017-10-31 | 4d | 39d |  |  |  |  |
| 249 | 1.2.4.2.3 | **Iteración 3** | 16d | 2017-10-20 | 2017-11-13 |  | 2017-11-27 | 2017-12-20 | 16.9d | 29d |  |  |  | 117.2h |
| 250 | 1.2.4.2.3.1 | **A. Desarrollo** | 10d | 2017-10-20 | 2017-11-03 |  | 2017-11-27 | 2017-12-11 | 10d | 29d |  |  |  | 88h |
| 251 | 1.2.4.2.3.1.1 | Implementación de cuatro (4) Reportes | 8d | 2017-10-20 | 2017-10-31 | 198 | 2017-11-27 | 2017-12-06 | 8d | 29d | 0d |  | César A | 64h |
| 252 | 1.2.4.2.3.1.2 | Revisión en Desarrollo | 1d | 2017-11-02 | 2017-11-02 | 251 | 2017-12-07 | 2017-12-07 | 1d | 39d | 0d |  | Edgar Marquez; Ronald Raico | 16h |
| 253 | 1.2.4.2.3.1.3 | Levantamiento de observaciones | 1d | 2017-11-03 | 2017-11-03 | 252 | 2017-12-11 | 2017-12-11 | 1d | 39d |  |  | César A | 8h |
| 254 | 1.2.4.2.3.2 | **B. Pruebas** | 2.8d | 2017-11-02 | 2017-11-06 |  | 2017-12-12 | 2017-12-14 | 2.6d | 29d |  |  |  | 29.2h |
| 255 | 1.2.4.2.3.2.1 | Documentación para el pase | 1d | 2017-11-02 | 2017-11-02 | 251, 253 | 2017-12-12 | 2017-12-12 | 0.5d | 29d | 0d |  | César A | 8h |
| 256 | 1.2.4.2.3.2.2 | Envío y Revisión por AF Calidad | 0.5d | 2017-11-03 | 2017-11-03 | 255 | 2017-12-12 | 2017-12-13 | 1d | 29d | 0d |  | AF Calidad | 4h |
| 257 | 1.2.4.2.3.2.3 | Levantamiento de Observaciones | 0.5d | 2017-11-03 | 2017-11-03 | 256 | 2017-12-13 | 2017-12-13 | 0.5d | 29d | 0d |  | César A | 4h |
| 258 | 1.2.4.2.3.2.4 | Pruebas con el equipo AE | 0.1d | 2017-11-06 | 2017-11-06 | 257 | 2017-12-14 | 2017-12-14 | 0.3d | 29d | 0d |  | César A; Luis Leiva; Wilson R [50%] | 2h |
| 259 | 1.2.4.2.3.2.5 | Pruebas de Aceptación (usuario) | 0.7d | 2017-11-06 | 2017-11-06 | 258 | 2017-12-14 | 2017-12-14 | 0.3d | 29d | 0d |  | César A; Luis Leiva | 11.2h |
| 260 | 1.2.4.2.3.3 | C. Pase a Producción | 0.2d | 2017-11-06 | 2017-11-06 | 259 | 2017-12-14 | 2017-12-14 | 0.3d | 29d | 0d |  |  |  |
| 261 | 1.2.4.2.3.4 | D. Seguimiento | 5d | 2017-11-07 | 2017-11-13 | 260 | 2017-12-14 | 2017-12-20 | 4d | 29d | 0d |  |  |  |
| 262 | 1.2.5 | **2.5 Actividades complementarias** | 198d | 2017-03-09 | 2017-12-21 |  | 2017-12-01 | 2017-12-29 | 19d | 6d |  |  |  |  |
| 263 | 1.2.5.1 | **2.5.1 Capacitación a Usuarios** | 26d | 2017-11-07 | 2017-12-13 |  | 2017-12-01 | 2017-12-29 | 19d | 12d |  |  |  |  |
| 264 | 1.2.5.1.1 | Expediente Virtual | 3d | 2017-12-11 | 2017-12-13 | 215 | 2017-12-01 | 2017-12-05 | 3d | 12d |  | start no earlier than 2017-12-01 |  |  |
| 265 | 1.2.5.1.2 | SGD - Atención | 3d | 2017-11-07 | 2017-11-09 | 260 | 2017-12-27 | 2017-12-29 | 3d | 35d |  |  |  |  |

| ID | WBS | Task | Duration | Start | Finish | Predecessors | Baseline start | Baseline finish | Baseline duration | Total slack | Free slack | Constraint |
| --- | --- | --- | --- | --- | --- | --- | --- | --- | --- | --- | --- | --- |
| 266 | 1.2.5.2 | **2.5.2 Transferencia a Informática** | 27d | 2017-11-14 | 2017-12-21 |  | 2017-12-20 | 2017-12-27 | 4d | 6d |  |  |
| 267 | 1.2.5.2.1 | Elaborar documento de transferencia - Exp | 3d | 2017-12-18 | 2017-12-20 | 216, 261 | 2017-12-20 | 2017-12-26 | 3d | 6d | 0d |  |
| 268 | 1.2.5.2.2 | Envío de documento formal | 1d | 2017-12-21 | 2017-12-21 | 267 | 2017-12-26 | 2017-12-27 | 1d | 6d |  |  |
| 269 | 1.2.5.2.3 | Elaborar documento de transferencia - SGD | 3d | 2017-11-14 | 2017-11-16 | 261 |  |  |  | 29d | 0d |  |
| 270 | 1.2.5.2.4 | Envío de documento formal | 1d | 2017-11-17 | 2017-11-17 | 269 |  |  |  | 29d |  |  |
| 271 | 1.2.5.3 | **2.5.3 Manuales de Usuario** | 151d | 2017-03-09 | 2017-10-13 |  |  |  |  | 53d |  |  |
| 272 | 1.2.5.3.1 | Manual 1 | 2d | 2017-10-11 | 2017-10-12 |  |  |  |  | 54d |  | start no earlier than 2017-10-11 |
| 273 | 1.2.5.3.2 | Manual 2 | 2d | 2017-10-11 | 2017-10-12 |  |  |  |  | 53d | 0d | start no earlier than 2017-10-11 |
| 274 | 1.2.5.3.3 | Manual 3 | 1d | 2017-10-13 | 2017-10-13 | 273 |  |  |  | 53d |  |  |
| 275 | 1.2.5.3.4 | Manual MECV | 5d | 2017-03-09 | 2017-03-15 |  |  |  |  | 199d |  |  |
| 276 | 1.2.5.3.5 | Manual SGD | 5d | 2017-03-09 | 2017-03-15 |  |  |  |  | 199d |  |  |
